# PlanTrabajo

Schedule from MS Project, 2023-02-20 to 2023-05-05, costs in $.

## Calendars

- Estándar: Mon-Fri 09:00-13:00, 15:00-19:00; Sat-Sun off.

## Resources

| Resource | Rate |
| --- | --- |
| Desarrollador 1 | 15 |
| Desarrollador 2 | 15 |
| Ing Pruebas | 10 |
| Arquitecto | 18 |
| Project Manager | 20 |

## Schedule

| ID | WBS | Task | Duration | Start | Finish | Predecessors | Total slack | Constraint | Resources | Work | Cost |
| --- | --- | --- | --- | --- | --- | --- | --- | --- | --- | --- | --- |
| 1 | 1 | **VCV** | 54.38d? | 2023-02-20 09:00 | 2023-05-05 12:00 |  | 0d |  |  | 581h | 8,708 |
| 2 | 1.1 | **Ambientación** | 0.5d | 2023-02-20 09:00 | 2023-02-20 13:00 |  | 0d |  |  | 4h | 60 |
| 3 | 1.1.1 | Servidor de Archivos | 2h | 2023-02-20 09:00 | 2023-02-20 11:00 |  | 0d | start no earlier than 2023-02-20 09:00 | Desarrollador 1 | 2h | 30 |
| 4 | 1.1.2 | Servidor Web | 2h | 2023-02-20 11:00 | 2023-02-20 13:00 | 3 | 0d |  | Desarrollador 1 | 2h | 30 |
| 5 | 1.2 | **Configuración** | 0.5d | 2023-02-20 15:00 | 2023-02-20 19:00 | 4 | 0d |  |  | 4h | 60 |
| 6 | 1.2.1 | App | 2h | 2023-02-20 15:00 | 2023-02-20 17:00 |  | 0d |  | Desarrollador 1 | 2h | 30 |
| 7 | 1.2.2 | Base de datos Interna SqlLIte | 2h | 2023-02-20 17:00 | 2023-02-20 19:00 | 6 | 0d |  | Desarrollador 1 | 2h | 30 |
| 8 | 1.3 | **Analisis y Diseño** | 4.75d | 2023-02-21 09:00 | 2023-02-27 17:00 | 7 | 0d |  |  | 38h | 688 |
| 9 | 1.3.1 | Contratos Api´s | 4h | 2023-02-21 09:00 | 2023-02-21 13:00 |  | 0d |  | Arquitecto | 4h | 72 |
| 10 | 1.3.2 | Modelo entidad relación DB Centralizada | 2h | 2023-02-21 15:00 | 2023-02-21 17:00 | 9 | 0d |  | Arquitecto | 2h | 36 |
| 11 | 1.3.3 | Modelo entidad relación DB interna Movil | 6h | 2023-02-21 17:00 | 2023-02-22 13:00 | 10 | 0d |  | Arquitecto | 6h | 108 |
| 12 | 1.3.4 | Entregable Modelo entidad relación DB interna Movil | 8h | 2023-02-22 15:00 | 2023-02-23 13:00 | 11 | 0d |  | Arquitecto | 8h | 144 |
| 13 | 1.3.5 | Documento de Arquitectura Software de APP | 16h | 2023-02-23 15:00 | 2023-02-27 13:00 | 12 | 0d |  | Arquitecto | 16h | 288 |
| 14 | 1.3.6 | Seguimiento actividades | 2h | 2023-02-27 15:00 | 2023-02-27 17:00 | 13 | 0d |  | Project Manager | 2h | 40 |
| 15 | 1.4 | **Desarrollo** | 48.62d? | 2023-02-27 17:00 | 2023-05-05 12:00 | 14 | 0d |  |  | 535h | 7,900 |
| 16 | 1.4.1 | **Splash Screen** | 1.5d | 2023-02-27 17:00 | 2023-03-01 11:00 |  | 0d |  |  | 12h | 180 |
| 17 | 1.4.1.1 | Crear Inerfaz de usuario | 6h | 2023-02-27 17:00 | 2023-02-28 13:00 |  | 0d |  | Desarrollador 1 | 6h | 90 |
| 18 | 1.4.1.2 | Pruebas unitarias | 1h | 2023-02-28 15:00 | 2023-02-28 16:00 | 17 | 0d |  | Desarrollador 1 | 1h | 15 |
| 19 | 1.4.1.3 | Pruebas de aseguramiento Calidad | 2h | 2023-02-28 16:00 | 2023-02-28 18:00 | 18 | 0d |  | Ing Pruebas | 2h | 20 |
| 20 | 1.4.1.4 | Seguimiento actividades | 2h | 2023-02-28 18:00 | 2023-03-01 10:00 | 19 | 0d |  | Project Manager | 2h | 40 |
| 21 | 1.4.1.5 | Presentación de funcionalidad | 1h | 2023-03-01 10:00 | 2023-03-01 11:00 | 20 | 0d |  | Desarrollador 1 | 1h | 15 |
| 22 | 1.4.2 | **Menú** | 3.12d | 2023-03-01 11:00 | 2023-03-06 12:00 | 21 | 0d |  |  | 25h | 370 |
| 23 | 1.4.2.1 | Crear Inerfaz de usuario | 8h | 2023-03-01 11:00 | 2023-03-02 11:00 |  | 0d |  | Desarrollador 1 | 8h | 120 |
| 24 | 1.4.2.2 | Controlador Api versión | 4h | 2023-03-02 11:00 | 2023-03-02 17:00 | 23 | 0d |  | Desarrollador 1 | 4h | 60 |
| 25 | 1.4.2.3 | Persitencia DB Interna versión | 2h | 2023-03-02 17:00 | 2023-03-02 19:00 | 24 | 0d |  | Desarrollador 1 | 2h | 30 |
| 26 | 1.4.2.4 | Consulta DB Interna versión | 1h | 2023-03-03 09:00 | 2023-03-03 10:00 | 25 | 0d |  | Desarrollador 1 | 1h | 15 |
| 27 | 1.4.2.5 | Consulta DB Interna última actualización | 1h | 2023-03-03 10:00 | 2023-03-03 11:00 | 26 | 0d |  | Desarrollador 1 | 1h | 15 |
| 28 | 1.4.2.6 | Consulta DB Interna último envío | 1h | 2023-03-03 11:00 | 2023-03-03 12:00 | 27 | 0d |  | Desarrollador 1 | 1h | 15 |
| 29 | 1.4.2.7 | Pruebas unitarias | 2h | 2023-03-03 12:00 | 2023-03-03 16:00 | 28 | 0d |  | Desarrollador 1 | 2h | 30 |
| 30 | 1.4.2.8 | Pruebas de aseguramiento Calidad | 3h | 2023-03-03 16:00 | 2023-03-03 19:00 | 29 | 0d |  | Ing Pruebas | 3h | 30 |
| 31 | 1.4.2.9 | Seguimiento actividades | 2h | 2023-03-06 09:00 | 2023-03-06 11:00 | 30 | 0d |  | Project Manager | 2h | 40 |
| 32 | 1.4.2.10 | Presentación de funcionalidad | 1h | 2023-03-06 11:00 | 2023-03-06 12:00 | 31 | 0d |  | Desarrollador 1 | 1h | 15 |

| ID | WBS | Task | Duration | Start | Finish | Predecessors | Total slack | Free slack | Resources | Work | Cost |
| --- | --- | --- | --- | --- | --- | --- | --- | --- | --- | --- | --- |
| 33 | 1.4.3 | **Guias** | 5.75d | 2023-03-06 12:00 | 2023-03-14 10:00 | 32 | 25.75d |  |  | 46h | 685 |
| 34 | 1.4.3.1 | Crear Inerfaz de usuario | 16h | 2023-03-06 12:00 | 2023-03-08 12:00 |  | 25.75d | 0d | Desarrollador 1 | 16h | 240 |
| 35 | 1.4.3.2 | Controlador Api Opciones de guias | 6h | 2023-03-08 12:00 | 2023-03-09 10:00 | 34 | 25.75d | 0d | Desarrollador 1 | 6h | 90 |
| 36 | 1.4.3.3 | Persitencia DB Interna Opciones de guias | 4h | 2023-03-09 10:00 | 2023-03-09 16:00 | 35 | 25.75d | 0d | Desarrollador 1 | 4h | 60 |
| 37 | 1.4.3.4 | Comparación HASH | 12h | 2023-03-09 16:00 | 2023-03-13 10:00 | 36 | 25.75d | 0d | Desarrollador 1 | 12h | 180 |
| 38 | 1.4.3.5 | Pruebas unitarias | 2h | 2023-03-13 10:00 | 2023-03-13 12:00 | 37 | 25.75d | 0d | Desarrollador 1 | 2h | 30 |
| 39 | 1.4.3.6 | Pruebas de aseguramiento Calidad | 3h | 2023-03-13 12:00 | 2023-03-13 17:00 | 38 | 25.75d | 0d | Ing Pruebas | 3h | 30 |
| 40 | 1.4.3.7 | Seguimiento actividades | 2h | 2023-03-13 17:00 | 2023-03-13 19:00 | 39 | 25.75d | 0d | Project Manager | 2h | 40 |
| 41 | 1.4.3.8 | Presentación de funcionalidad | 1h | 2023-03-14 09:00 | 2023-03-14 10:00 | 40 | 25.75d | 0d | Desarrollador 1 | 1h | 15 |
| 42 | 1.4.4 | **Guia -> “Aplicación de riego”** | 3.88d | 2023-03-14 10:00 | 2023-03-17 19:00 | 41 | 25.75d |  |  | 31h | 440 |
| 43 | 1.4.4.1 | Crear Inerfaz de usuario | 8h | 2023-03-14 10:00 | 2023-03-15 10:00 |  | 25.75d | 0d | Desarrollador 1 | 8h | 120 |
| 44 | 1.4.4.2 | Consultar DB Interna Opciones de guias | 1h | 2023-03-15 10:00 | 2023-03-15 11:00 | 43 | 25.75d | 0d | Desarrollador 1 | 1h | 15 |
| 45 | 1.4.4.3 | Visualizar Html | 6h | 2023-03-15 11:00 | 2023-03-15 19:00 | 44 | 25.75d | 0d | Desarrollador 1 | 6h | 90 |
| 46 | 1.4.4.4 | Pruebas unitarias | 4h | 2023-03-16 09:00 | 2023-03-16 13:00 | 45 | 25.75d | 0d | Desarrollador 1 | 4h | 60 |
| 47 | 1.4.4.5 | Pruebas de aseguramiento Calidad | 8h | 2023-03-16 15:00 | 2023-03-17 13:00 | 46 | 25.75d | 0d | Ing Pruebas | 8h | 80 |
| 48 | 1.4.4.6 | Seguimiento actividades | 3h | 2023-03-17 15:00 | 2023-03-17 18:00 | 47 | 25.75d | 0d | Project Manager | 3h | 60 |
| 49 | 1.4.4.7 | Presentación de funcionalidad | 1h | 2023-03-17 18:00 | 2023-03-17 19:00 | 48 | 25.75d | 0d | Desarrollador 1 | 1h | 15 |
| 50 | 1.4.5 | **Autentificación Usuario** | 3.62d | 2023-03-20 09:00 | 2023-03-23 16:00 | 49 | 25.75d |  |  | 29h | 425 |
| 51 | 1.4.5.1 | Crear Inerfaz de usuario | 12h | 2023-03-20 09:00 | 2023-03-21 13:00 |  | 25.75d | 0d | Desarrollador 1 | 12h | 180 |
| 52 | 1.4.5.2 | Controlador Api autentificación de usuario | 5h | 2023-03-21 15:00 | 2023-03-22 10:00 | 51 | 25.75d | 0d | Desarrollador 1 | 5h | 75 |
| 53 | 1.4.5.3 | Persitencia DB Interna autentificación de usuario | 4h | 2023-03-22 10:00 | 2023-03-22 16:00 | 52 | 25.75d | 0d | Desarrollador 1 | 4h | 60 |
| 54 | 1.4.5.4 | Pruebas unitarias | 3h | 2023-03-22 16:00 | 2023-03-22 19:00 | 53 | 25.75d | 0d | Desarrollador 1 | 3h | 45 |
| 55 | 1.4.5.5 | Pruebas de aseguramiento Calidad | 3h | 2023-03-23 09:00 | 2023-03-23 12:00 | 54 | 25.75d | 0d | Ing Pruebas | 3h | 30 |
| 56 | 1.4.5.6 | Seguimiento actividades | 1h | 2023-03-23 12:00 | 2023-03-23 13:00 | 55 | 25.75d | 0d | Project Manager | 1h | 20 |
| 57 | 1.4.5.7 | Presentación de funcionalidad | 1h | 2023-03-23 15:00 | 2023-03-23 16:00 | 56 | 25.75d | 0d | Desarrollador 1 | 1h | 15 |

| ID | WBS | Task | Duration | Start | Finish | Predecessors | Total slack | Free slack | Constraint | Resources | Work | Cost |
| --- | --- | --- | --- | --- | --- | --- | --- | --- | --- | --- | --- | --- |
| 58 | 1.4.6 | **Importar números de serie** | 5d | 2023-03-23 16:00 | 2023-03-30 16:00 | 57 | 25.75d |  |  |  | 40h | 590 |
| 59 | 1.4.6.1 | Crear Inerfaz de usuario | 20h | 2023-03-23 16:00 | 2023-03-28 10:00 |  | 25.75d | 0d |  | Desarrollador 1 | 20h | 300 |
| 60 | 1.4.6.2 | Controlador Api a números de serie | 5h | 2023-03-28 10:00 | 2023-03-28 17:00 | 59 | 25.75d | 0d |  | Desarrollador 1 | 5h | 75 |
| 61 | 1.4.6.3 | Persitencia DB Interna números de serie | 6h | 2023-03-28 17:00 | 2023-03-29 13:00 | 60 | 25.75d | 0d |  | Desarrollador 1 | 6h | 90 |
| 62 | 1.4.6.4 | Pruebas unitarias | 4h | 2023-03-29 15:00 | 2023-03-29 19:00 | 61 | 25.75d | 0d |  | Desarrollador 1 | 4h | 60 |
| 63 | 1.4.6.5 | Pruebas de aseguramiento Calidad | 3h | 2023-03-30 09:00 | 2023-03-30 12:00 | 62 | 25.75d | 0d |  | Ing Pruebas | 3h | 30 |
| 64 | 1.4.6.6 | Seguimiento actividades | 1h | 2023-03-30 12:00 | 2023-03-30 13:00 | 63 | 25.75d | 0d |  | Project Manager | 1h | 20 |
| 65 | 1.4.6.7 | Presentación de funcionalidad | 1h | 2023-03-30 15:00 | 2023-03-30 16:00 | 64 | 25.75d |  |  | Desarrollador 1 | 1h | 15 |
| 66 | 1.4.7 | **Supervisión** | 33.25d? | 2023-03-06 12:00 | 2023-04-20 16:00 | 32 | 0d |  |  |  | 266h | 3,930 |
| 67 | 1.4.7.1 | Crear Inerfaz de usuario | 16h | 2023-03-06 12:00 | 2023-03-08 12:00 |  | 0d |  | start no earlier than 2023-02-20 09:00 | Desarrollador 2 | 16h | 240 |
| 68 | 1.4.7.2 | Consulta DB Interna números de serie | 2h | 2023-03-08 12:00 | 2023-03-08 16:00 | 67 | 0d |  |  | Desarrollador 2 | 2h | 30 |
| 69 | 1.4.7.3 | Pruebas unitarias | 4h | 2023-03-08 16:00 | 2023-03-09 10:00 | 68 | 0d |  |  | Desarrollador 2 | 4h | 60 |
| 70 | 1.4.7.4 | Pruebas de aseguramiento Calidad | 3h | 2023-03-09 10:00 | 2023-03-09 13:00 | 69 | 0d |  |  | Ing Pruebas | 3h | 30 |
| 71 | 1.4.7.5 | Seguimiento actividades | 1h | 2023-03-09 15:00 | 2023-03-09 16:00 | 70 | 0d |  |  | Project Manager | 1h | 20 |
| 72 | 1.4.7.6 | Presentación de funcionalidad | 1h | 2023-03-09 16:00 | 2023-03-09 17:00 | 71 | 0d |  |  | Desarrollador 2 | 1h | 15 |
| 73 | 1.4.7.7 | **Supervisión - Datos Generales** | 2.88d | 2023-03-09 17:00 | 2023-03-14 16:00 | 72 | 0d |  |  |  | 23h | 335 |
| 74 | 1.4.7.7.1 | Crear Inerfaz de usuario | 12h | 2023-03-09 17:00 | 2023-03-13 11:00 |  | 0d |  |  | Desarrollador 2 | 12h | 180 |
| 75 | 1.4.7.7.2 | Consulta DB Interna números de serie | 2h | 2023-03-13 11:00 | 2023-03-13 13:00 | 74 | 0d |  |  | Desarrollador 2 | 2h | 30 |
| 76 | 1.4.7.7.3 | Pruebas unitarias | 4h | 2023-03-13 15:00 | 2023-03-13 19:00 | 75 | 0d |  |  | Desarrollador 2 | 4h | 60 |
| 77 | 1.4.7.7.4 | Pruebas de aseguramiento Calidad | 3h | 2023-03-14 09:00 | 2023-03-14 12:00 | 76 | 0d |  |  | Ing Pruebas | 3h | 30 |
| 78 | 1.4.7.7.5 | Seguimiento actividades | 1h | 2023-03-14 12:00 | 2023-03-14 13:00 | 77 | 0d |  |  | Project Manager | 1h | 20 |
| 79 | 1.4.7.7.6 | Presentación de funcionalidad | 1h | 2023-03-14 15:00 | 2023-03-14 16:00 | 78 | 0d |  |  | Desarrollador 2 | 1h | 15 |
| 80 | 1.4.7.8 | **Supervisión - Datos Especificos Dinámicos** | 6.88d | 2023-03-14 16:00 | 2023-03-23 13:00 | 79 | 0d |  |  |  | 55h | 815 |
| 81 | 1.4.7.8.1 | Crear Inerfaz de usuario | 40h | 2023-03-14 16:00 | 2023-03-21 16:00 |  | 0d |  |  | Desarrollador 2 | 40h | 600 |
| 82 | 1.4.7.8.2 | Consulta DB Interna números de serie | 2h | 2023-03-21 16:00 | 2023-03-21 18:00 | 81 | 0d |  |  | Desarrollador 2 | 2h | 30 |
| 83 | 1.4.7.8.3 | Pruebas unitarias | 8h | 2023-03-21 18:00 | 2023-03-22 18:00 | 82 | 0d |  |  | Desarrollador 2 | 8h | 120 |
| 84 | 1.4.7.8.4 | Pruebas de aseguramiento Calidad | 3h | 2023-03-22 18:00 | 2023-03-23 11:00 | 83 | 0d |  |  | Ing Pruebas | 3h | 30 |
| 85 | 1.4.7.8.5 | Seguimiento actividades | 1h | 2023-03-23 11:00 | 2023-03-23 12:00 | 84 | 0d |  |  | Project Manager | 1h | 20 |
| 86 | 1.4.7.8.6 | Presentación de funcionalidad | 1h | 2023-03-23 12:00 | 2023-03-23 13:00 | 85 | 0d |  |  | Desarrollador 2 | 1h | 15 |

| ID | WBS | Task | Duration | Start | Finish | Predecessors | Total slack | Resources | Work | Cost |
| --- | --- | --- | --- | --- | --- | --- | --- | --- | --- | --- |
| 87 | 1.4.7.9 | **Supervisión - Evidencia Fotografica** | 4.25d | 2023-03-23 15:00 | 2023-03-29 17:00 | 86 | 0d |  | 34h | 500 |
| 88 | 1.4.7.9.1 | Crear Inerfaz de usuario | 14h | 2023-03-23 15:00 | 2023-03-27 11:00 |  | 0d | Desarrollador 2 | 14h | 210 |
| 89 | 1.4.7.9.2 | Tomar fotografía de evidencia | 5h | 2023-03-27 11:00 | 2023-03-27 18:00 | 88 | 0d | Desarrollador 2 | 5h | 75 |
| 90 | 1.4.7.9.3 | Consulta DB Interna números de serie | 2h | 2023-03-27 18:00 | 2023-03-28 10:00 | 89 | 0d | Desarrollador 2 | 2h | 30 |
| 91 | 1.4.7.9.4 | Pruebas unitarias | 8h | 2023-03-28 10:00 | 2023-03-29 10:00 | 90 | 0d | Desarrollador 2 | 8h | 120 |
| 92 | 1.4.7.9.5 | Pruebas de aseguramiento Calidad | 3h | 2023-03-29 10:00 | 2023-03-29 13:00 | 91 | 0d | Ing Pruebas | 3h | 30 |
| 93 | 1.4.7.9.6 | Seguimiento actividades | 1h | 2023-03-29 15:00 | 2023-03-29 16:00 | 92 | 0d | Project Manager | 1h | 20 |
| 94 | 1.4.7.9.7 | Presentación de funcionalidad | 1h | 2023-03-29 16:00 | 2023-03-29 17:00 | 93 | 0d | Desarrollador 2 | 1h | 15 |
| 95 | 1.4.7.10 | **Supervisión - Identificaciones** | 8d? | 2023-03-29 17:00 | 2023-04-10 17:00 | 94 | 0d |  | 64h | 950 |
| 96 | 1.4.7.10.1 | Crear Inerfaz de usuario | 36h | 2023-03-29 17:00 | 2023-04-05 11:00 |  | 0d | Desarrollador 2 | 36h | 540 |
| 97 | 1.4.7.10.2 | Tomar fotografía de identificación | 5h | 2023-04-05 11:00 | 2023-04-05 18:00 | 96 | 0d | Desarrollador 2 | 5h | 75 |
| 98 | 1.4.7.10.3 | Generar firma | 1d? | 2023-04-05 18:00 | 2023-04-06 18:00 | 97 | 0d | Desarrollador 2 | 8h | 120 |
| 99 | 1.4.7.10.4 | Consulta DB Interna números de serie | 2h | 2023-04-06 18:00 | 2023-04-07 10:00 | 98 | 0d | Desarrollador 2 | 2h | 30 |
| 100 | 1.4.7.10.5 | Pruebas unitarias | 8h | 2023-04-07 10:00 | 2023-04-10 10:00 | 99 | 0d | Desarrollador 2 | 8h | 120 |
| 101 | 1.4.7.10.6 | Pruebas de aseguramiento Calidad | 3h | 2023-04-10 10:00 | 2023-04-10 13:00 | 100 | 0d | Ing Pruebas | 3h | 30 |
| 102 | 1.4.7.10.7 | Seguimiento actividades | 1h | 2023-04-10 15:00 | 2023-04-10 16:00 | 101 | 0d | Project Manager | 1h | 20 |
| 103 | 1.4.7.10.8 | Presentación de funcionalidad | 1h | 2023-04-10 16:00 | 2023-04-10 17:00 | 102 | 0d | Desarrollador 1 | 1h | 15 |
| 104 | 1.4.7.11 | **Supervisión - Finalización** | 7.88d | 2023-04-10 17:00 | 2023-04-20 16:00 | 103 | 0d |  | 63h | 935 |
| 105 | 1.4.7.11.1 | Crear Inerfaz de usuario | 36h | 2023-04-10 17:00 | 2023-04-17 11:00 |  | 0d | Desarrollador 2 | 36h | 540 |
| 106 | 1.4.7.11.2 | Consulta DB Interna números de serie | 2h | 2023-04-17 11:00 | 2023-04-17 13:00 | 105 | 0d | Desarrollador 2 | 2h | 30 |
| 107 | 1.4.7.11.3 | Generar Zip | 8h | 2023-04-17 15:00 | 2023-04-18 13:00 | 106 | 0d | Desarrollador 2 | 8h | 120 |
| 108 | 1.4.7.11.4 | Actualizar DB Interna de envío ( finalizada ) | 4h | 2023-04-18 15:00 | 2023-04-18 19:00 | 107 | 0d | Desarrollador 2 | 4h | 60 |
| 109 | 1.4.7.11.5 | Pruebas unitarias | 8h | 2023-04-19 09:00 | 2023-04-19 19:00 | 108 | 0d | Desarrollador 2 | 8h | 120 |
| 110 | 1.4.7.11.6 | Pruebas de aseguramiento Calidad | 3h | 2023-04-20 09:00 | 2023-04-20 12:00 | 109 | 0d | Ing Pruebas | 3h | 30 |
| 111 | 1.4.7.11.7 | Seguimiento actividades | 1h | 2023-04-20 12:00 | 2023-04-20 13:00 | 110 | 0d | Project Manager | 1h | 20 |
| 112 | 1.4.7.11.8 | Presentación de funcionalidad | 1h | 2023-04-20 15:00 | 2023-04-20 16:00 | 111 | 0d | Desarrollador 2 | 1h | 15 |

| ID | WBS | Task | Duration | Start | Finish | Predecessors | Total slack | Resources | Work | Cost |
| --- | --- | --- | --- | --- | --- | --- | --- | --- | --- | --- |
| 113 | 1.4.8 | **Envio de verificaciones** | 5.88d | 2023-04-20 16:00 | 2023-04-28 13:00 | 112 | 0d |  | 47h | 705 |
| 114 | 1.4.8.1 | Crear Inerfaz de usuario | 20h | 2023-04-20 16:00 | 2023-04-25 10:00 |  | 0d | Desarrollador 2 | 20h | 300 |
| 115 | 1.4.8.2 | Consulta DB Interna verificaciones finalizadas | 2h | 2023-04-25 10:00 | 2023-04-25 12:00 | 114 | 0d | Desarrollador 2 | 2h | 30 |
| 116 | 1.4.8.3 | Guardar Zip en servidor | 8h | 2023-04-25 12:00 | 2023-04-26 12:00 | 115 | 0d | Desarrollador 2 | 8h | 120 |
| 117 | 1.4.8.4 | Persitencia DB Interna de envío ( estatus enviado ) | 4h | 2023-04-26 12:00 | 2023-04-26 18:00 | 116 | 0d | Desarrollador 2 | 4h | 60 |
| 118 | 1.4.8.5 | Pruebas unitarias | 8h | 2023-04-26 18:00 | 2023-04-27 18:00 | 117 | 0d | Desarrollador 2 | 8h | 120 |
| 119 | 1.4.8.6 | Pruebas de aseguramiento Calidad | 3h | 2023-04-27 18:00 | 2023-04-28 11:00 | 118 | 0d | Desarrollador 2 | 3h | 45 |
| 120 | 1.4.8.7 | Seguimiento actividades | 1h | 2023-04-28 11:00 | 2023-04-28 12:00 | 119 | 0d | Desarrollador 2 | 1h | 15 |
| 121 | 1.4.8.8 | Presentación de funcionalidad | 1h | 2023-04-28 12:00 | 2023-04-28 13:00 | 120 | 0d | Desarrollador 2 | 1h | 15 |
| 122 | 1.4.9 | **Historial de Envíos** | 4.88d | 2023-04-28 15:00 | 2023-05-05 12:00 | 121 | 0d |  | 39h | 575 |
| 123 | 1.4.9.1 | Crear Inerfaz de usuario | 16h | 2023-04-28 15:00 | 2023-05-02 13:00 |  | 0d | Desarrollador 2 | 16h | 240 |
| 124 | 1.4.9.2 | Consulta DB Interna verificaciones finalizadas | 2h | 2023-05-02 15:00 | 2023-05-02 17:00 | 123 | 0d | Desarrollador 2 | 2h | 30 |
| 125 | 1.4.9.3 | Eliminar Zip en localmente | 4h | 2023-05-02 17:00 | 2023-05-03 11:00 | 124 | 0d | Desarrollador 2 | 4h | 60 |
| 126 | 1.4.9.4 | Persitencia DB Interna de envío ( estatus eliminado) | 4h | 2023-05-03 11:00 | 2023-05-03 17:00 | 125 | 0d | Desarrollador 2 | 4h | 60 |
| 127 | 1.4.9.5 | Pruebas unitarias | 8h | 2023-05-03 17:00 | 2023-05-04 17:00 | 126 | 0d | Desarrollador 2 | 8h | 120 |
| 128 | 1.4.9.6 | Pruebas de aseguramiento Calidad | 3h | 2023-05-04 17:00 | 2023-05-05 10:00 | 127 | 0d | Ing Pruebas | 3h | 30 |
| 129 | 1.4.9.7 | Seguimiento actividades | 1h | 2023-05-05 10:00 | 2023-05-05 11:00 | 128 | 0d | Project Manager | 1h | 20 |
| 130 | 1.4.9.8 | Presentación de funcionalidad | 1h | 2023-05-05 11:00 | 2023-05-05 12:00 | 129 | 0d | Desarrollador 2 | 1h | 15 |
